# GEMCO Water Disposal Project - Summary Schedule for Ranging - 20-Jan-2026

Schedule from Primavera P6, 2025-03-24 to 2026-05-18, data date 2025-03-24, A marks actual dates.

## Calendars

- GEMCO EXCESS WATER-Execution: Mon-Sun 08:00-12:00, 13:00-17:00. Exceptions (off unless hours are given): 2025-12-25 to 2026-02-28.
- WSP 5 Day Workweek: Mon-Fri 08:00-12:00, 13:00-17:00; Sat-Sun off.
- # 7 Day Week: Mon-Sun 08:00-12:00, 13:00-17:00.
- GEMCO EXCESS WATER EXE-Wet: Mon-Sun 08:00-12:00, 13:00-17:00. Exceptions (off unless hours are given): 2025-12-25 to 2026-03-31.
- 01. BNE (8h+5d+PH+Xmas (to 2026)): Mon-Fri 07:00-11:00, 13:00-17:00; Sat-Sun off. Exceptions (off unless hours are given): 2025-04-18, 2025-04-21, 2025-04-25, 2025-05-05, 2025-08-13, 2025-10-06, 2025-12-23 to 2025-12-26, 2025-12-29 to 2026-01-02, 2026-01-26, 2026-04-03, 2026-04-06, 2026-05-04.

## Schedule

| ID | WBS | Activity | Type | Duration | Start | Finish | Predecessors | Remaining | Planned start | Planned finish | Total float | Free float | Constraint | Expected finish | Calendar |
| --- | --- | --- | --- | --- | --- | --- | --- | --- | --- | --- | --- | --- | --- | --- | --- |
|  | 6 | **Key Milestones** |  |  | 2026-05-18 | 2026-05-18 |  |  |  |  |  |  |  |  |  |
| A1330 |  | ES To NH2 Completion | milestone | 0d | 2026-05-18 | 2026-05-18 | A1170 FF |  |  |  | 0d |  |  |  | 01. BNE (8h+5d+PH+Xmas (to 2026)) |
|  | 1 | **ES to NH2** |  |  | 2025-03-24 | 2026-05-18 |  |  |  |  |  |  |  |  |  |
|  | 1 | **Tollgate** |  |  | 2025-03-24 | 2025-06-02 |  |  |  |  |  |  |  |  |  |
| A1000 |  | Tollgate Preparation and Documentation |  | 42.67d | 2025-03-24 A | 2025-04-30 |  | 29.87d | 2025-03-24 | 2025-05-16 | 0d |  |  | 2025-04-30 | WSP 5 Day Workweek |
| A1050 |  | Final Estimate and Schedule |  | 5d | 2025-03-31 A | 2025-04-30 |  | 29.87d | 2025-04-24 | 2025-04-30 | 0d |  |  | 2025-04-30 | WSP 5 Day Workweek |
| A1100 |  | Governance Review |  | 15d | 2025-05-01 | 2025-05-21 | A1000, A1050 |  |  |  | 0d |  |  |  | WSP 5 Day Workweek |
| A1110 |  | COOIC Pre Read and Meeting - Funding Approval |  | 5d | 2025-05-21 | 2025-05-27 | A1100 |  |  |  | 0d |  |  |  | WSP 5 Day Workweek |
| A1320 |  | Funding Available |  | 4d | 2025-05-27 | 2025-06-02 | A1110 |  |  |  | 0d |  |  |  | WSP 5 Day Workweek |
|  | 7 | **Contracts** |  |  | 2025-03-31 | 2025-06-25 |  |  |  |  |  |  |  |  |  |
| A1360 |  | Onshore (Civil & Piping) Contractor Tender |  | 47.73d | 2025-03-31 A | 2025-06-23 |  | 70.2d | 2025-04-22 | 2025-06-23 | 0d |  |  | 2025-06-23 | WSP 5 Day Workweek |
| A1400 |  | Award Contract - Onshore |  | 2d | 2025-06-23 | 2025-06-25 | A1360 |  |  |  | 0d |  |  |  | WSP 5 Day Workweek |
|  | 2 | **Procurement** |  |  | 2025-06-02 | 2026-02-23 |  |  |  |  |  |  |  |  |  |
| A1130 |  | Place Orders |  | 0.1d | 2025-06-02 | 2025-06-02 | A1110, A1320 |  |  |  | 0d |  |  |  | # 7 Day Week |
| A1120 |  | ES to NH2 - Pumps |  | 266d | 2025-06-02 | 2026-02-23 | A1110, A1130 |  |  |  | 0d |  |  |  | # 7 Day Week |
| A1410 |  | HDPE -800mm Pipe fabrication |  | 60d | 2025-06-02 | 2025-08-01 | A1130 |  |  |  | 0.09d |  |  |  | # 7 Day Week |
| A1420 |  | ES to NH2 - MCC/Switchroom |  | 240d | 2025-06-02 | 2026-01-28 | A1130 |  |  |  | 26d |  |  |  | # 7 Day Week |
| A1430 |  | Procurement other items, Valves, Flow meters, Fuel storage, Custom piping, Steel, |  | 196d | 2025-06-02 | 2025-12-15 | A1130 |  |  |  | 70d |  |  |  | # 7 Day Week |
|  | 3 | **Construction** |  |  | 2025-06-25 | 2026-05-18 |  |  |  |  |  |  |  |  |  |
| A1370 |  | Mobilisation - Civil & Piping Contractor |  | 45d | 2025-06-25 | 2025-08-09 | A1400, A1360, A1130 |  |  |  | 0d |  |  |  |  |
| A1190 |  | Destuff Containers |  | 21d | 2025-08-01 | 2025-08-22 | A1410, A1370 FS-8d |  |  |  | 0d |  |  |  |  |
| A1140 |  | Pipe Stringing, Welding, |  | 65d | 2025-08-09 | 2025-10-13 | A1190 SS+7d, A1370, A1360 |  |  |  | 8d | 0d |  |  |  |
| A1150 |  | Road Crossings |  | 70d | 2025-08-22 | 2025-10-31 | A1190, A1140 SS+5d |  |  |  | 0d |  |  |  |  |
| A1180 |  | Pump station Civils & Concrete |  | 83d | 2025-10-01 | 2025-12-23 | A1150 FS-30d |  |  |  | 0d | 1.31d | finish on or before 2025-12-23 |  | GEMCO EXCESS WATER EXE-Wet |
| A1310 |  | Hydrostatic testing |  | 10d | 2025-10-13 | 2025-10-23 | A1140 |  |  |  | 119.91d |  |  |  |  |
| A1240 |  | Mobilisation - Mech & Elec |  | 7d | 2026-02-23 | 2026-03-02 | A1180, A1430, A1420, A1120 |  |  |  | 0d |  | start on or after 2026-02-18 |  | # 7 Day Week |
| A1230 |  | Mech install (structure/pumps/MCC,genset,fuel tank) |  | 21d | 2026-03-02 | 2026-03-23 | A1180, A1240 |  |  |  | 0d |  |  |  |  |
| A1160 |  | Elec Install Pump Station Equipment |  | 35d | 2026-03-23 | 2026-04-27 | A1230, A1420, A1240, A1120, A1130, A1180, A1430 |  |  |  | 0d |  |  |  |  |
| A1170 |  | Commissioning |  | 21d | 2026-04-27 | 2026-05-18 | A1310 FF, A1230, A1160, A1140, A1310 |  |  |  | 0d |  |  |  |  |

| WBS | Activity |
| --- | --- |
| 2 | **NH2 to Port** |
| 1 | **Tollgate** |
| 2 | **Procurement** |
| 3 | **Construction** |
| 3 | **Marine** |
| 1 | **Tollgate** |
| 2 | **Procurement** |
| 3 | **Construction** |
| 4 | **Environmental Approvals** |
| 5 | **Project Close Out** |
