# GEMCO Water Disposal Project - Summary Schedule for Ranging - 20-Jan-2026

Schedule from Primavera P6, 2026-01-05 to 2027-08-17, data date 2025-03-24, A marks actual dates.

## Calendars

- GEMCO Wharf Shutdown Day Shift: Mon-Sun 06:00-18:00. Exceptions (off unless hours are given): 2026-03-05 to 2026-03-12, 2026-07-09 to 2026-07-14, 2026-11-04 to 2026-11-12, 2026-12-20 to 2027-01-02, 2027-03-05 to 2027-03-12, 2027-07-09 to 2027-07-14.

## Schedule

| ID | Activity | Duration | Start | Finish | Remaining | Total float |
| --- | --- | --- | --- | --- | --- | --- |
| 19282-FS-CURRENT-35.6.3.2 | Approvals & Permits | 58.67d | 2026-01-05 A | 2026-06-30 | 0d | 0d |
| 19282-FS-CURRENT-35.6.11 | Key Milestones | 191.67d | 2026-01-19 A | 2027-08-17 | 0d | 0d |
| 19282-FS-CURRENT-35.6.5.3 | Owners Team activities | 40.67d | 2026-01-23 | 2026-05-25 |  | 0d |
| 19282-FS-CURRENT-35.6.5.6 | Early Execution Works | 52.33d | 2026-03-15 | 2026-08-19 |  | 0d |
| 19282-FS-CURRENT-35.6.7.2 | Tollgate Partial Funding - Conditional Approval pending Regulatory Approvals | 8d | 2026-03-21 | 2026-04-14 |  | 0d |
| 19282-FS-CURRENT-35.6.3.1.2.1.1 | KEY DATES (MILESTONES) | 104.33d | 2026-04-06 | 2027-02-13 |  | 0d |
| 19282-FS-CURRENT-35.6.3.1.2.1.2.1 | PREPARATION & PRELIMINARY WORK | 54.67d | 2026-04-06 | 2026-09-17 |  | 0d |
| 19282-FS-CURRENT-35.6.3.1.2 | WASCO | 104.33d | 2026-04-06 | 2027-02-13 |  | 0d |
| 19282-FS-CURRENT-35.6.3.1 | Onshore | 128.67d | 2026-04-06 | 2027-04-27 |  | 0d |
| 19282-FS-CURRENT-35.6.7.3 | Full Funding Confirmation of Primary Approval | 43.33d | 2026-04-09 | 2026-08-17 |  | 0d |
| 19282-FS-CURRENT-35.6.3.1.5.1.4.7 | Marine Mobilisation | 87d | 2026-04-22 | 2027-01-08 |  | 0d |
| 19282-FS-CURRENT-35.6.3.1.5 | Marine Site works | 126.67d | 2026-04-22 | 2027-05-07 |  | 0d |
| 19282-FS-CURRENT-35.6.3.1.2.1.2.2.1.2.2.1 | SP1 - EARLY WORKS | 41.33d | 2026-05-20 | 2026-09-21 |  | 0d |
| 19282-FS-CURRENT-35.6.3.1.2.1.2.2 | MOBILISE & CONSTRUCT | 89.33d | 2026-05-20 | 2027-02-12 |  | 0d |
| 19282-FS-CURRENT-35.6.3.1.2.1.2.2.1.2.2.2.1.2.2.2.1 | BARGE VOYAGES - EAST ARM TO MILNER BAY (SEASWIFT) | 0d | 2026-06-04 | 2026-06-04 |  | 0d |
| 19282-FS-CURRENT-35.6.3.1.2.1.2.2.1.2.2.2 | SP2 - MAIN WORKS | 84.33d | 2026-06-04 | 2027-02-12 |  | 0d |
| 19282-FS-CURRENT-35.6.3.1.1 | Summary (superseded) | 108.67d | 2026-06-05 | 2027-04-27 |  | 0d |
| 19282-FS-CURRENT-35.6.3.1.2.1.2.2.1.2.2.3 | SP3 - OCEAN OUTFALL AREA | 28.33d | 2026-07-01 | 2026-09-24 |  | 0d |
| 19282-FS-CURRENT-35.6.3.1.2.1.2.2.1.2.2.2.1.2.2.2.2 | PIPELINE - EWP Stage 1 (ES to NH2) DN800 Single Line | 68.33d | 2026-07-02 | 2027-01-23 |  | 0d |
| 19282-FS-CURRENT-35.6.7.1 | Regulatory Approvals (Primary & Secondary) | 4.67d | 2026-08-06 | 2026-08-20 |  | 0d |
| 19282-FS-CURRENT-35.6.7.7 | Contracts and Procurement - August Full Funding (upon regulatory approvals receipt) | 16.33d | 2026-08-13 | 2026-10-01 |  | 0d |
| 19282-FS-CURRENT-35.6.3.1.2.1.2.2.1.2.2.2.1.2.2.2.4 | NH2 PUMPING FACILITY - CONCRETE WORKS | 36.67d | 2026-08-16 | 2026-12-04 |  | 0d |
| 19282-FS-CURRENT-35.6.3.1.3 | S19 | 20d | 2026-08-20 | 2026-10-19 |  | 0d |
| 19282-FS-CURRENT-35.6.3.1.5.1.5.1 | Offshore works | 74.67d | 2026-09-18 | 2027-04-30 |  | 0d |
| 19282-FS-CURRENT-35.6.3.1.5.1.5.2 | Shoreside Works | 50.67d | 2026-10-22 | 2027-03-23 |  | 0d |
| 19282-FS-CURRENT-35.6.3.1.5.1.5.1.1.5.1.5 | Kingpile wall (135m) | 37.67d | 2026-10-26 | 2027-02-16 |  | 0d |
| 19282-FS-CURRENT-35.6.3.1.5.1.5.2.1.5.2.4 | Construct truss tower | 42.33d | 2026-10-27 | 2027-03-03 |  | 0d |
| 19282-FS-CURRENT-35.6.3.1.5.1.5.2.1.5.2.5 | Construct outfall Ch-4 to CH91 | 44.33d | 2026-11-10 | 2027-03-23 |  | 0d |
| 19282-FS-CURRENT-35.6.3.1.4.8 | Marine Demobilisation | 56.33d | 2026-12-02 | 2027-05-20 |  | 0d |
| 19282-FS-CURRENT-35.6.3.1.2.1.2.2.1.2.2.2.1.2.2.2.3 | Hydrostatic Testing | 6.33d | 2027-01-24 | 2027-02-12 |  | 0d |
| 19282-FS-CURRENT-35.6.3.1.5.1.5.1.1 | Excavation & Backfill | 28d | 2027-02-05 | 2027-04-30 |  | 0d |
| 19282-FS-CURRENT-35.6.3.1.5.1 | Final | 2.33d | 2027-04-30 | 2027-05-07 |  | 0d |
| 19282-FS-CURRENT-35.6.3.4 | Final works | 20.33d | 2027-05-07 | 2027-07-07 |  | 0d |
| 19282-FS-CURRENT-35.6.2 | Close Out | 20.67d | 2027-06-16 | 2027-08-17 |  | 0d |
| 19282-FS-CURRENT-35.5.PGHN.1 | Project Milestones | 0d |  |  |  | 0d |
| 19282-FS-CURRENT-35.5.PGHN.3 | Primary Approval Submission Process | 0d |  |  |  | 0d |
| 19282-FS-CURRENT-35.5.PGHN.3.9 | Primary Approval Applications | 0d |  | 2027-07-13 |  | 0d |
| 19282-FS-CURRENT-35.5.PGHN.4 | GHD - Supplementary Environmental Report (SER) | 0d |  | 2026-08-04 |  | 0d |
| 19282-FS-CURRENT-35.5.PGHN.7 | Secondary Approvals | 0d |  | 2026-09-29 |  | 0d |
| 19282-FS-CURRENT-35.6.3.3 | Design Confirmation Site Assesments | 0d |  | 2026-07-06 |  | 0d |
| 19282-FS-CURRENT-35.6.5.7 | Precommitment Approvals | 0d |  | 2026-01-30 |  | 0d |
| 19282-FS-CURRENT-35.6.5.9 | Contracts and Supply Packages - Precommitment funding | 0d |  | 2026-09-25 |  | 0d |
| 19282-FS-CURRENT-35.6.7.5 | Preparation works for Tollgating - Partial Funding | 0d |  | 2026-04-01 |  | 0d |
| 19282-FS-CURRENT-35.6.7.6 | Contracts and Procurement - Tollgate March Partial funding | 0d |  | 2026-09-29 |  | 0d |
| 19282-FS-CURRENT-35.5.PGHN | Environmental Impact Assessment studies | 0d |  | 2027-07-13 |  | 0d |
| 19282-FS-CURRENT-35.6.1 | Marine | 0d |  | 2026-01-22 |  | 0d |
| 19282-FS-CURRENT-35.6.1.3 | Design - IFT to IFC | 0d |  | 2026-08-17 |  | 0d |
| 19282-FS-CURRENT-35.6.3 | Execution Works | 0d |  | 2027-07-07 |  | 0d |
| 19282-FS-CURRENT-35.6.31 | 8.0 Project Approval Process - Final Tollgate | 0d |  |  |  | 0d |
| 19282-FS-CURRENT-35.6.5 | Precommitment | 0d |  | 2026-09-25 |  | 0d |
| 19282-FS-CURRENT-35.6.7 | Tollgate Phase | 0d |  | 2026-10-01 |  | 0d |
| 19282-FS-CURRENT-35.5 | Environmental Approvals | 0d |  | 2027-07-13 |  | 0d |
| 19282-FS-CURRENT-35.6 | Base Case | 0d |  | 2027-08-17 |  | 0d |
| 19282-FS-CURRENT-35 | GEMCO Water Disposal FS Master Schedule - 16-01-2026 - Jan Update | 0d |  | 2027-08-17 |  | 0d |

| WBS | Activity |
| --- | --- |
| 6 | **Key Milestones** |
| 1 | **ES to NH2** |
| 1 | **Tollgate** |
| 7 | **Contracts** |
| 2 | **Procurement** |
| 3 | **Construction** |
| 2 | **NH2 to Port** |
| 1 | **Tollgate** |
| 2 | **Procurement** |
| 3 | **Construction** |
| 3 | **Marine** |
| 1 | **Tollgate** |
| 2 | **Procurement** |
| 3 | **Construction** |
| 4 | **Environmental Approvals** |
| 5 | **Project Close Out** |
